# Tareas

Schedule from MS Project, 2016-09-12 to 2016-12-26, costs in €.

## Calendars

- Estándar: Mon-Fri 09:00-13:00, 15:00-19:00; Sat-Sun off.

## Resources

| Resource | Rate |
| --- | --- |
| Jesús | 25 |
| Antonio | 25 |
| Ruben | 25 |
| George | 25 |
| Dani | 25 |

## Schedule

| ID | WBS | Task | Type | Duration | Start | Finish | Predecessors | Total slack | Free slack | Resources | Work | Cost |
| --- | --- | --- | --- | --- | --- | --- | --- | --- | --- | --- | --- | --- |
| 2 | 1 | **HITO 0** |  | 27.38d | 2016-09-12 09:00 | 2016-10-19 12:00 |  | 0d |  |  | 377.1h | 9,427.5 |
| 3 | 1.1 | **Iteración 1** |  | 7.12d | 2016-09-12 09:00 | 2016-09-21 10:00 |  | 0d |  |  | 125h | 3,125 |
| 4 | 1.1.1 | Definir el público objetivo |  | 6h | 2016-09-12 09:00 | 2016-09-12 17:00 |  | 0d |  | Antonio | 6h | 150 |
| 5 | 1.1.2 | Definir los problemas y soluciones de esos usuarios |  | 6h | 2016-09-12 17:00 | 2016-09-13 13:00 | 4 | 0d |  | Jesús | 6h | 150 |
| 6 | 1.1.3 | Deninir métricas |  | 5h | 2016-09-13 15:00 | 2016-09-14 10:00 | 5 | 0d |  | George | 5h | 125 |
| 7 | 1.1.4 | Especificar los costes y los ingresos |  | 1d | 2016-09-14 10:00 | 2016-09-15 10:00 | 6 | 0d |  | Ruben | 8h | 200 |
| 8 | 1.1.5 | Definir los canales |  | 4h | 2016-09-14 10:00 | 2016-09-14 16:00 | 6 | 0.5d |  | Dani | 4h | 100 |
| 9 | 1.1.6 | Rellenar documento de Concepto del proyecto |  | 4d | 2016-09-15 10:00 | 2016-09-21 10:00 | 6, 7, 8 | 0d |  | Antonio; George; Jesús | 96h | 2,400 |
| 10 | 1.1.7 | * Entregables Iteración 1: LEAN Canvas y especificación del mismo | milestone | 0d | 2016-09-12 09:00 | 2016-09-12 09:00 |  | 7.12d |  |  |  |  |
| 11 | 1.2 | **Iteración 2** |  | 10d | 2016-09-21 10:00 | 2016-10-05 10:00 | 3 | 0d |  |  | 111h | 2,775 |
| 12 | 1.2.1 | Definir los tipos de usuarios |  | 4h | 2016-09-21 10:00 | 2016-09-21 16:00 |  | 0d |  | Antonio; Jesús | 8h | 200 |
| 13 | 1.2.2 | Definir las interfaces externas |  | 4h | 2016-09-21 16:00 | 2016-09-22 10:00 | 12 | 0d |  | Ruben | 4h | 100 |
| 14 | 1.2.3 | **Definir los requisitos funcionales** |  | 2.62d | 2016-09-22 10:00 | 2016-09-26 17:00 | 12, 13 | 0d |  |  | 24h | 600 |
| 15 | 1.2.3.1 | De usuario invitado |  | 2h | 2016-09-22 10:00 | 2016-09-22 12:00 |  | 0d |  | Antonio | 2h | 50 |
| 16 | 1.2.3.2 | De usuario registrado free |  | 6h | 2016-09-22 12:00 | 2016-09-23 10:00 | 15 | 0d |  | Jesús | 6h | 150 |
| 17 | 1.2.3.3 | De usuario registrado premium |  | 6h | 2016-09-23 10:00 | 2016-09-23 18:00 | 16 | 0d |  | George | 6h | 150 |
| 18 | 1.2.3.4 | Del usuario profesor |  | 4h | 2016-09-23 18:00 | 2016-09-26 12:00 | 17 | 0d |  | George | 4h | 100 |
| 19 | 1.2.3.5 | Del usuario tipo Alumno |  | 3h | 2016-09-26 12:00 | 2016-09-26 17:00 | 18 | 0d |  | George | 3h | 75 |
| 20 | 1.2.3.6 | Del Administrador |  | 3h | 2016-09-23 18:00 | 2016-09-26 11:00 | 17 | 0.5d |  | Jesús | 3h | 75 |
| 21 | 1.2.4 | Elaborar el Presupuesto (hoja de cálculo) |  | 5h | 2016-09-26 17:00 | 2016-09-27 12:00 | 14 | 0d |  | George; Ruben | 10h | 250 |
| 22 | 1.2.5 | **Requisitos no Funcionales** |  | 3.5d | 2016-09-27 12:00 | 2016-09-30 18:00 | 21 | 0d |  |  | 28h | 700 |
| 23 | 1.2.5.1 | Integridad |  | 1d | 2016-09-27 12:00 | 2016-09-28 12:00 |  | 0d |  | George | 8h | 200 |
| 24 | 1.2.5.2 | Fiabilidad |  | 5h | 2016-09-28 12:00 | 2016-09-28 19:00 | 23 | 0d |  | Antonio | 5h | 125 |
| 25 | 1.2.5.3 | Mantenimiento |  | 4h | 2016-09-29 09:00 | 2016-09-29 13:00 | 24 | 0d |  | George | 4h | 100 |
| 26 | 1.2.5.4 | Privacidad |  | 5h | 2016-09-29 15:00 | 2016-09-30 10:00 | 25 | 0d |  | Antonio | 5h | 125 |
| 27 | 1.2.5.5 | Usabilidad y Accesibilidad |  | 3h | 2016-09-30 10:00 | 2016-09-30 13:00 | 26 | 0d |  | George | 3h | 75 |
| 28 | 1.2.5.6 | Autentificación |  | 3h | 2016-09-30 15:00 | 2016-09-30 18:00 | 27 | 0d |  | Antonio | 3h | 75 |
| 29 | 1.2.6 | Definir funcionalidades del sistema(casos de uso) |  | 4h | 2016-09-30 18:00 | 2016-10-03 12:00 | 22 | 0d |  | Antonio; George; Jesús | 12h | 300 |
| 30 | 1.2.7 | Sketch de la infografía |  | 1d | 2016-10-03 12:00 | 2016-10-04 12:00 | 29 | 0d |  |  |  |  |
| 31 | 1.2.8 | Métricas a utilizar y software del proyecto |  | 6h | 2016-10-04 12:00 | 2016-10-05 10:00 | 30 | 0d |  | Antonio; George | 12h | 300 |
| 32 | 1.2.9 | Especificar API's a utilizar |  | 3h | 2016-09-26 17:00 | 2016-09-27 10:00 | 14 | 4.75d | 0d | Jesús | 3h | 75 |
| 33 | 1.2.10 | Medios de difusión de la plataforma |  | 3h | 2016-09-27 10:00 | 2016-09-27 13:00 | 32 | 4.75d | 0d | George | 3h | 75 |
| 34 | 1.2.11 | Especificar el tipo de contenido de la web |  | 4h | 2016-09-27 15:00 | 2016-09-27 19:00 | 33 | 4.75d | 0d | Antonio | 4h | 100 |
| 35 | 1.2.12 | Definir los derechos de copyright |  | 3h | 2016-09-28 09:00 | 2016-09-28 12:00 | 34 | 4.75d |  | Jesús | 3h | 75 |
| 36 | 1.2.13 | * Entregables Iteración 2: Documento de Especificación del proyecto + Hoja de cálculo de presupuesto | milestone | 0d | 2016-09-21 10:00 | 2016-09-21 10:00 |  | 10d |  |  |  |  |

| ID | WBS | Task | Type | Duration | Start | Finish | Predecessors | Total slack | Free slack | Resources | Work | Cost |
| --- | --- | --- | --- | --- | --- | --- | --- | --- | --- | --- | --- | --- |
| 37 | 1.3 | **Iteración 3** |  | 10.25d | 2016-10-05 10:00 | 2016-10-19 12:00 | 11 | 0d |  |  | 141.1h | 3,527.5 |
| 38 | 1.3.1 | Observaciones GitHub |  | 1d | 2016-10-05 10:00 | 2016-10-06 10:00 |  | 0d |  | Antonio; George; Jesús | 24h | 600 |
| 39 | 1.3.2 | Introducir tareas en el Project |  | 6h | 2016-10-06 10:00 | 2016-10-06 18:00 | 38 | 0d |  | George | 6h | 150 |
| 40 | 1.3.3 | Arreglar hoja de presupuestos |  | 6h | 2016-10-06 18:00 | 2016-10-07 16:00 | 39 | 0d |  | Ruben | 6h | 150 |
| 41 | 1.3.4 | **Mockups del sistema** |  | 3.75d | 2016-10-07 16:00 | 2016-10-13 12:00 | 40 | 0d |  |  | 39h | 975 |
| 42 | 1.3.4.1 | Del usuario no registrado |  | 5h | 2016-10-07 16:00 | 2016-10-10 11:00 |  | 0d |  | George [60%] | 3h | 75 |
| 43 | 1.3.4.2 | Del usuario registrado Free |  | 11h | 2016-10-10 11:00 | 2016-10-11 16:00 | 42 | 1.75d |  | Antonio | 11h | 275 |
| 44 | 1.3.4.3 | Del profesor |  | 11h | 2016-10-10 11:00 | 2016-10-11 16:00 | 42 | 0d |  | George | 11h | 275 |
| 45 | 1.3.4.4 | Del usuario Registrado premium |  | 7h | 2016-10-11 16:00 | 2016-10-12 13:00 | 44 | 0d |  | Jesús | 7h | 175 |
| 46 | 1.3.4.5 | Del alumno |  | 7h | 2016-10-12 15:00 | 2016-10-13 12:00 | 45 | 0d |  | Jesús | 7h | 175 |
| 47 | 1.3.5 | Rectificar todos los fallos del documentos especificados por el profesor |  | 1d | 2016-10-06 18:00 | 2016-10-07 18:00 | 39 | 7.5d |  | Antonio; George [40%]; Jesús | 19.2h | 480 |
| 48 | 1.3.6 | Crear diagrama de clases |  | 11h | 2016-10-13 12:00 | 2016-10-14 17:00 | 41 | 0d |  | Antonio [70%] | 7.7h | 192.5 |
| 49 | 1.3.7 | Arquitectura del Sistema |  | 1d | 2016-10-14 17:00 | 2016-10-17 17:00 | 48 | 0d |  | Antonio | 8h | 200 |
| 50 | 1.3.8 | Especificación de elementos y tecnologías de seguridad y autenticación |  | 10h | 2016-10-17 17:00 | 2016-10-18 19:00 | 49 | 0d |  | Antonio; George | 20h | 500 |
| 51 | 1.3.9 | Especificación API Rest y del modelo de datos |  | 3h | 2016-10-13 12:00 | 2016-10-13 17:00 | 41 | 3.5d | 0d | Antonio [30%]; George | 3.9h | 97.5 |
| 52 | 1.3.10 | Instalar Apache |  | 3h | 2016-10-19 09:00 | 2016-10-19 12:00 | 50 | 0d |  | Antonio; George | 6h | 150 |
| 53 | 1.3.11 | Instalar MySQL |  | 1h | 2016-10-13 17:00 | 2016-10-13 18:00 | 51 | 3.5d |  | Antonio [30%]; George | 1.3h | 32.5 |
| 54 | 1.3.12 | *Entregables Iteración 3: Documento final de Especificación y Requisitos, Presupuesto y documento con las tareas Project | milestone | 0d | 2016-10-05 10:00 | 2016-10-05 10:00 |  | 10.25d |  |  |  |  |
| 55 | 2 | **HITO 1** |  | 48.52d? | 2016-10-19 12:00 | 2016-12-26 18:12 | 2 | 0d |  |  | 860.5h | 21,512.5 |
| 56 | 2.1 | **Iteración 1** |  | 10.03d | 2016-10-19 12:00 | 2016-11-02 12:12 |  | 0d |  |  | 323.7h | 8,092.5 |
| 57 | 2.1.1 | Corregir comentarios Villagra y Berna |  | 5h | 2016-10-19 12:00 | 2016-10-19 19:00 |  | 0d |  | Antonio [80%]; George [80%]; Jesús [80%] | 12h | 300 |
| 58 | 2.1.2 | **Detallar plan de iteraciones del mes de noviembre** |  | 1.5d | 2016-10-20 09:00 | 2016-10-21 13:00 | 57 | 0.03d | 0d |  | 9.6h | 240 |
| 59 | 2.1.2.1 | Crear Subtareas Project |  | 4h | 2016-10-20 09:00 | 2016-10-20 13:00 |  | 0.03d | 0d | George [80%] | 3.2h | 80 |
| 60 | 2.1.2.2 | Definir procedencias Project |  | 4h | 2016-10-20 15:00 | 2016-10-20 19:00 | 59 | 0.03d | 0d | George [80%] | 3.2h | 80 |
| 61 | 2.1.2.3 | Crear los recursos en Project |  | 4h | 2016-10-21 09:00 | 2016-10-21 13:00 | 60 | 0.03d |  | George [80%] | 3.2h | 80 |
| 62 | 2.1.3 | Realizar MOOC LeanCanvas |  | 2d | 2016-10-21 15:00 | 2016-10-25 13:00 | 58 | 0.03d | 0d | Antonio [80%]; Dani [60%]; Jesús [80%] | 35.2h | 880 |

| ID | WBS | Task | Duration | Start | Finish | Predecessors | Total slack | Free slack | Resources | Work | Cost |
| --- | --- | --- | --- | --- | --- | --- | --- | --- | --- | --- | --- |
| 63 | 2.1.4 | **Configuración e instalación de los elementos de Backend y Seguridad** | 2.5d | 2016-10-25 15:00 | 2016-10-27 19:00 | 62 | 0.03d | 0d |  | 25.6h | 640 |
| 64 | 2.1.4.1 | Instalación MySQL | 4h | 2016-10-25 15:00 | 2016-10-25 19:00 |  | 0.03d | 0d | Antonio [80%]; George [80%] | 6.4h | 160 |
| 65 | 2.1.4.2 | Configuración Apache | 1d | 2016-10-26 09:00 | 2016-10-26 19:00 | 64 | 0.03d | 0d | Antonio [80%]; George [80%] | 12.8h | 320 |
| 66 | 2.1.4.3 | Crear todas las tablas en la BD | 1d | 2016-10-27 09:00 | 2016-10-27 19:00 | 65 | 0.03d |  | Antonio [80%] | 6.4h | 160 |
| 67 | 2.1.5 | **Identificar los riesgos** | 3.38d | 2016-10-28 09:00 | 2016-11-02 12:00 | 63 | 0.03d |  |  | 72.9h | 1,822.5 |
| 68 | 2.1.5.1 | De Tecnología | 6h | 2016-10-28 09:00 | 2016-10-28 17:00 |  | 0.03d | 0d | Jesús [80%]; Ruben [30%]; Antonio [80%]; George [80%] | 16.2h | 405 |
| 69 | 2.1.5.2 | De Personas | 4h | 2016-10-28 17:00 | 2016-10-31 11:00 | 68 | 0.03d | 0d | George [80%]; Jesús [80%]; Ruben [30%]; Antonio [80%] | 10.8h | 270 |
| 70 | 2.1.5.3 | Organizacional | 4h | 2016-10-31 11:00 | 2016-10-31 17:00 | 69 | 0.03d | 0d | Antonio [80%]; George [80%]; Jesús [80%]; Ruben [30%] | 10.8h | 270 |
| 71 | 2.1.5.4 | Herramientas | 4h | 2016-10-31 17:00 | 2016-11-01 11:00 | 70 | 0.03d | 0d | Antonio [80%]; George [80%]; Jesús [80%]; Ruben [30%] | 10.8h | 270 |
| 72 | 2.1.5.5 | De Requerimientos | 4h | 2016-11-01 11:00 | 2016-11-01 17:00 | 71 | 0.03d | 0d | Antonio [80%]; George [80%]; Jesús [80%]; Ruben [30%] | 10.8h | 270 |
| 73 | 2.1.5.6 | De Estimación | 5h | 2016-11-01 17:00 | 2016-11-02 12:00 | 72 | 0.03d |  | Antonio [80%]; George [80%]; Jesús [80%]; Ruben [30%] | 13.5h | 337.5 |
| 74 | 2.1.6 | **Empezar con la animación del logo** | 9.4d | 2016-10-20 09:00 | 2016-11-02 12:12 | 57 | 0d |  |  | 104.4h | 2,610 |
| 75 | 2.1.6.1 | Hacer bocetos del logo | 3.5d | 2016-10-20 09:00 | 2016-10-25 13:00 |  | 0d |  | Ruben [80%]; Dani [40%] | 33.6h | 840 |
| 76 | 2.1.6.2 | Buscar ejemplos de intros | 4d | 2016-10-25 15:00 | 2016-10-31 13:00 | 75 | 0d |  | Ruben [50%]; Dani | 48h | 1,200 |
| 77 | 2.1.6.3 | Buscar tutoriales de affter efects | 1.9d | 2016-10-31 15:00 | 2016-11-02 12:12 | 76 | 0d |  | Ruben [50%]; Dani | 22.8h | 570 |
| 78 | 2.1.7 | Registrar tiempos y % de realización de tareas | 9.5d | 2016-10-19 12:00 | 2016-11-01 18:00 |  | 0.03d | 0d | Antonio [10%]; George [10%]; Jesús [10%]; Ruben [10%] | 30.4h | 760 |
| 79 | 2.1.8 | Comparar la planificación prevista con la real de la iteración 1 | 9.5d | 2016-10-19 12:00 | 2016-11-01 18:00 |  | 0.03d | 0d | Antonio [10%]; George [10%]; Jesús [10%]; Ruben [10%] | 30.4h | 760 |
| 80 | 2.1.9 | Confeccionar informe de la iteración 1 | 0.5d | 2016-11-01 18:00 | 2016-11-02 12:00 | 78, 79 | 0.03d |  | Antonio [20%]; George [20%]; Jesús [20%]; Ruben [20%] | 3.2h | 80 |
| 81 | 2.2 | **Iteración 2** | 10d | 2016-11-02 12:12 | 2016-11-16 12:12 | 56 | 0d |  |  | 344.8h | 8,620 |
| 82 | 2.2.1 | Corregir y rectificar fallos de la iteración anterior | 1d | 2016-11-02 12:12 | 2016-11-03 12:12 |  | 0.38d | 0d | Antonio [80%]; George [80%]; Jesús [80%] | 19.2h | 480 |
| 83 | 2.2.2 | **Análisis de Riesgos** | 1.75d | 2016-11-03 12:12 | 2016-11-07 10:12 | 82 | 0.38d |  |  | 22.4h | 560 |
| 84 | 2.2.2.1 | Prioridades de los riesgos | 6h | 2016-11-03 12:12 | 2016-11-04 10:12 |  | 0.38d | 0d | Antonio [80%]; Jesús [80%] | 9.6h | 240 |
| 85 | 2.2.2.2 | Planes de contingencias | 1d | 2016-11-04 10:12 | 2016-11-07 10:12 | 84 | 0.38d | 0d | Antonio [80%]; George [80%] | 12.8h | 320 |
| 86 | 2.2.3 | Instalar los elementos de backend y seguridad | 3d | 2016-11-07 10:12 | 2016-11-10 10:12 | 85 | 0.38d | 0d | Antonio [80%]; George [80%] | 38.4h | 960 |
| 87 | 2.2.4 | Boceto del diagrama de Flujo de Interfaces | 4h | 2016-11-10 10:12 | 2016-11-10 16:12 | 86 | 0.38d | 0d | George [80%]; Jesús [80%] | 6.4h | 160 |

| ID | WBS | Task | Duration | Start | Finish | Predecessors | Total slack | Free slack | Resources | Work | Cost |
| --- | --- | --- | --- | --- | --- | --- | --- | --- | --- | --- | --- |
| 88 | 2.2.5 | **Trabajar en el posicionamiento web** | 3.38d | 2016-11-10 16:12 | 2016-11-16 09:12 | 87 | 0.38d |  |  | 64.8h | 1,620 |
| 89 | 2.2.5.1 | Búsqueda de las palabras clave | 4h | 2016-11-10 16:12 | 2016-11-11 10:12 |  | 0.38d | 0d | Antonio [80%]; George [80%]; Jesús [80%] | 9.6h | 240 |
| 90 | 2.2.5.2 | Definir sinónimos y términos relacionados a esas palabras clave | 4h | 2016-11-11 10:12 | 2016-11-11 16:12 | 89 | 0.38d | 0d | Antonio [80%]; George [80%]; Jesús [80%] | 9.6h | 240 |
| 91 | 2.2.5.3 | Definir técnicas para que la araña de Google visite nuestra wen | 5h | 2016-11-11 16:12 | 2016-11-14 11:12 | 90 | 0.38d | 0d | Antonio [80%]; George [80%]; Jesús [80%] | 12h | 300 |
| 92 | 2.2.5.4 | Definir técnicas para aumentar la relevancia | 6h | 2016-11-14 11:12 | 2016-11-15 09:12 | 91 | 0.38d | 0d | Antonio [80%]; George [80%]; Jesús [80%] | 14.4h | 360 |
| 93 | 2.2.5.5 | **Aumentar la autoridad web** | 1d | 2016-11-15 09:12 | 2016-11-16 09:12 | 92 | 0.38d |  |  | 19.2h | 480 |
| 94 | 2.2.5.5.1 | Mediante Linkbuilding | 4h | 2016-11-15 09:12 | 2016-11-15 15:12 |  | 0.38d | 0d | Antonio [80%]; George [80%]; Jesús [80%] | 9.6h | 240 |
| 95 | 2.2.5.5.2 | Mediante Linkbaiting | 4h | 2016-11-15 15:12 | 2016-11-16 09:12 | 94 | 0.38d |  | Antonio [80%]; George [80%]; Jesús [80%] | 9.6h | 240 |
| 96 | 2.2.6 | **Hacer bocetos de la animación del logo** | 9d | 2016-11-02 12:12 | 2016-11-15 12:12 |  | 1d |  |  | 129.6h | 3,240 |
| 97 | 2.2.6.1 | Elegir Logo | 1d | 2016-11-02 12:12 | 2016-11-03 12:12 |  | 1d | 0d | Ruben [80%]; Dani | 14.4h | 360 |
| 98 | 2.2.6.2 | Hacer composición básica | 4d | 2016-11-03 12:12 | 2016-11-09 12:12 | 97 | 1d | 0d | Ruben [80%]; Dani | 57.6h | 1,440 |
| 99 | 2.2.6.3 | Probar diferentes efectos | 2d | 2016-11-09 12:12 | 2016-11-11 12:12 | 98 | 1d | 0d | Ruben [80%]; Dani | 28.8h | 720 |
| 100 | 2.2.6.4 | Pensar cambios y mejoras | 2d | 2016-11-11 12:12 | 2016-11-15 12:12 | 99 | 1d |  | Ruben [80%]; Dani | 28.8h | 720 |
| 101 | 2.2.7 | Registrar tiempos y % de realización de tareas | 9.5d | 2016-11-02 12:12 | 2016-11-15 18:12 |  | 0d |  | Jesús [10%]; Antonio [10%]; Ruben [10%]; George [10%] | 30.4h | 760 |
| 102 | 2.2.8 | Comparar la planificación prevista con la real de la iteración 2 | 9.5d | 2016-11-02 12:12 | 2016-11-15 18:12 |  | 0d |  | Jesús [10%]; Antonio [10%]; Ruben [10%]; George [10%] | 30.4h | 760 |
| 103 | 2.2.9 | Confeccionar informe de la iteración 2 | 0.5d | 2016-11-15 18:12 | 2016-11-16 12:12 | 102, 101 | 0d |  | Jesús [20%]; George [20%]; Ruben [20%]; Antonio [20%] | 3.2h | 80 |
| 104 | 2.3 | **Iteración 3** | 9.5d? | 2016-11-16 12:12 | 2016-11-29 18:12 | 81 | 0d |  |  | 64h | 1,600 |
| 105 | 2.3.1 | Aplicar el modelo EVA en el proyecto | 1d | 2016-11-16 12:12 | 2016-11-17 12:12 |  | 8.5d |  |  |  |  |
| 106 | 2.3.2 | Revisar el diagrama del flujo de interfaces | 1d? | 2016-11-16 12:12 | 2016-11-17 12:12 |  | 8.5d |  |  |  |  |
| 107 | 2.3.3 | **API RESTful** | 1.5d | 2016-11-16 12:12 | 2016-11-17 18:12 |  | 8d |  |  |  |  |
| 108 | 2.3.3.1 | Instalar Oauth 2.0 | 2h | 2016-11-16 12:12 | 2016-11-16 16:12 |  | 8d | 0d |  |  |  |
| 109 | 2.3.3.2 | Hacer pruebas de seguridad | 5h | 2016-11-16 16:12 | 2016-11-17 11:12 | 108 | 8d | 0d |  |  |  |
| 110 | 2.3.3.3 | Hacer pruebas de carga | 5h | 2016-11-17 11:12 | 2016-11-17 18:12 | 109 | 8d |  |  |  |  |
| 111 | 2.3.4 | Registrar tiempos y % de realización de tareas | 9.5d | 2016-11-16 12:12 | 2016-11-29 18:12 |  | 0d |  | Jesús [10%]; Antonio [10%]; Ruben [10%]; George [10%] | 30.4h | 760 |
| 112 | 2.3.5 | Comparar la planificación prevista con la real de la iteración 1 | 9.5d | 2016-11-16 12:12 | 2016-11-29 18:12 |  | 0d |  | Jesús [10%]; Antonio [10%]; Ruben [10%]; George [10%] | 30.4h | 760 |
| 113 | 2.3.6 | Confeccionar informe de la iteración 1 | 0.5d | 2016-11-16 12:12 | 2016-11-16 18:12 |  | 9d |  | Jesús [20%]; George [20%]; Ruben [20%]; Antonio [20%] | 3.2h | 80 |

| ID | WBS | Task | Type | Duration | Start | Finish | Predecessors | Total slack | Resources | Work | Cost |
| --- | --- | --- | --- | --- | --- | --- | --- | --- | --- | --- | --- |
| 114 | 2.4 | **Iteración 4** |  | 9.5d | 2016-11-29 18:12 | 2016-12-13 12:12 | 104 | 0d |  | 64h | 1,600 |
| 115 | 2.4.1 | Registrar tiempos y % de realización de tareas |  | 9.5d | 2016-11-29 18:12 | 2016-12-13 12:12 |  | 0d | Jesús [10%]; Antonio [10%]; Ruben [10%]; George [10%] | 30.4h | 760 |
| 116 | 2.4.2 | Comparar la planificación prevista con la real de la iteración 1 |  | 9.5d | 2016-11-29 18:12 | 2016-12-13 12:12 |  | 0d | Jesús [10%]; Antonio [10%]; Ruben [10%]; George [10%] | 30.4h | 760 |
| 117 | 2.4.3 | Confeccionar informe de la iteración 1 |  | 0.5d | 2016-11-29 18:12 | 2016-11-30 12:12 |  | 9d | Jesús [20%]; George [20%]; Ruben [20%]; Antonio [20%] | 3.2h | 80 |
| 118 | 2.5 | **Iteración 5** |  | 9.5d | 2016-12-13 12:12 | 2016-12-26 18:12 | 114 | 0d |  | 64h | 1,600 |
| 119 | 2.5.1 | Registrar tiempos y % de realización de tareas |  | 9.5d | 2016-12-13 12:12 | 2016-12-26 18:12 |  | 0d | Jesús [10%]; Antonio [10%]; Ruben [10%]; George [10%] | 30.4h | 760 |
| 120 | 2.5.2 | Comparar la planificación prevista con la real de la iteración 1 |  | 9.5d | 2016-12-13 12:12 | 2016-12-26 18:12 |  | 0d | Jesús [10%]; Antonio [10%]; Ruben [10%]; George [10%] | 30.4h | 760 |
| 121 | 2.5.3 | Confeccionar informe de la iteración 1 |  | 0.5d | 2016-12-13 12:12 | 2016-12-13 18:12 |  | 9d | Jesús [20%]; George [20%]; Ruben [20%]; Antonio [20%] | 3.2h | 80 |
| 123 | 3 | **Colores de las asignaturas** |  | 0d | 2016-09-12 09:00 | 2016-09-12 09:00 |  |  |  |  |  |
| 124 | 3.1 | Proyecto Multimedia | milestone | 0d | 2016-09-12 09:00 | 2016-09-12 09:00 |  | 75.9d |  |  |  |
| 125 | 3.2 | Sistemas de Difusion Multimedia | milestone | 0d | 2016-09-12 09:00 | 2016-09-12 09:00 |  | 75.9d |  |  |  |
| 126 | 3.3 | Sistemas Multimedia Basados en Internet | milestone | 0d | 2016-09-12 09:00 | 2016-09-12 09:00 |  | 75.9d |  |  |  |
| 127 | 3.4 | E- Learning | milestone | 0d | 2016-09-12 09:00 | 2016-09-12 09:00 |  | 75.9d |  |  |  |
| 128 | 3.5 | Sistemas Multimedia Avanzados | milestone | 0d | 2016-09-12 09:00 | 2016-09-12 09:00 |  | 75.9d |  |  |  |
| 129 | 3.6 | Postproducción Digital | milestone | 0d | 2016-09-12 09:00 | 2016-09-12 09:00 |  | 75.9d |  |  |  |
| 130 | 3.7 | Negocios Multimedia | milestone | 0d | 2016-09-12 09:00 | 2016-09-12 09:00 |  | 75.9d |  |  |  |
